Schedule from MS Project, 2019-05-14 to 2019-07-12, status date 2019-05-21, costs in ₫, A marks actual dates.

## Calendars

- Standard: Mon-Fri 08:00-12:00, 13:00-17:00; Sat-Sun off.

## Resources

| Resource | Rate |
| --- | --- |
| Phan Tran Hoang Duong | 180000 |
| Nguyen Thi Ha Anh | 120000 |
| Vu Minh Duy | 120000 |
| Nguyen Hong Phat | 150000 |

## Schedule

| ID | WBS | Task | Duration | Start | Finish | Predecessors | Complete | Remaining | Total slack | Constraint | Resources | Work | Actual work | Cost | Actual cost |
| --- | --- | --- | --- | --- | --- | --- | --- | --- | --- | --- | --- | --- | --- | --- | --- |
| 1 | 1 | **Requirement Specification** | 12d | 2019-05-14 A | 2019-05-29 |  | 65% | 4.24d |  |  |  | 136h | 88h | 18,720,000 | 11,040,000 |
| 2 | 1.1 | Survey Volunteerer | 1w | 2019-05-14 A | 2019-05-20 A |  | 100% |  |  | finish no earlier than 2019-05-20 | Nguyen Thi Ha Anh | 40h | 40h | 4,800,000 | 4,800,000 |
| 3 | 1.2 | Questionare Organization | 1w | 2019-05-14 A | 2019-05-20 A |  | 100% |  |  | finish no earlier than 2019-05-20 | Vu Minh Duy | 40h | 40h | 4,800,000 | 4,800,000 |
| 4 | 1.3 | Define Problem Statement of Volunteer & Organiztion | 3d | 2019-05-21 A | 2019-05-23 | 2, 3 | 33% | 2d | 0d |  | Phan Tran Hoang Duong | 24h | 8h | 4,320,000 | 1,440,000 |
| 5 | 1.4 | Business Analysis for System | 2d | 2019-05-24 | 2019-05-27 | 4 |  |  | 0d |  | Phan Tran Hoang Duong | 16h |  | 2,880,000 |  |
| 6 | 1.5 | Create System Specification | 2d | 2019-05-28 | 2019-05-29 | 5 |  |  | 0d |  | Vu Minh Duy | 16h |  | 1,920,000 |  |
| 7 | 2 | **System Architecture Design** | 15d | 2019-05-30 | 2019-06-19 | 1 |  |  | 0d |  |  | 120h |  | 19,440,000 |  |
| 8 | 2.1 | Design Database for multi usage | 1d | 2019-05-30 | 2019-05-30 | 6 |  |  | 0d |  | Nguyen Thi Ha Anh | 8h |  | 960,000 |  |
| 9 | 2.2 | Design Web API for manipulate | 1d | 2019-05-31 | 2019-05-31 | 8 |  |  | 0d |  | Nguyen Hong Phat | 8h |  | 1,200,000 |  |
| 10 | 2.3 | Design Web App for Administrator | 3d | 2019-06-03 | 2019-06-05 | 9 |  |  | 0d |  | Vu Minh Duy | 24h |  | 2,880,000 |  |
| 11 | 2.4 | Design Mobile App Mockup for Volunteer & Organization | 2w | 2019-06-06 | 2019-06-19 | 10 |  |  | 0d |  | Phan Tran Hoang Duong | 80h |  | 14,400,000 |  |
| 12 | 3 | **Implementation** | 14.38d? | 2019-06-20 | 2019-07-10 | 7 |  |  | 0d |  |  | 117h |  | 16,680,000 |  |
| 13 | 3.1 | Generate DB first .NET framework | 2h | 2019-06-20 | 2019-06-20 | 8 |  |  | 0d |  | Phan Tran Hoang Duong | 2h |  | 360,000 |  |
| 14 | 3.2 | Export API from Database manipulate | 1h | 2019-06-20 | 2019-06-20 | 13 |  |  | 0d |  | Vu Minh Duy | 1h |  | 120,000 |  |
| 15 | 3.3 | **Create frontend Web VueJS for Administrator** | 6d | 2019-06-20 | 2019-06-28 | 14 |  |  | 0d |  |  | 48h |  | 6,960,000 |  |
| 16 | 3.3.1 | Scaffolding project from template | 1d | 2019-06-20 | 2019-06-21 | 9 |  |  | 0d |  | Vu Minh Duy | 8h |  | 960,000 |  |
| 17 | 3.3.2 | Authenticating and token handler | 1d | 2019-06-21 | 2019-06-24 | 16 |  |  | 0d |  | Nguyen Hong Phat | 8h |  | 1,200,000 |  |
| 18 | 3.3.3 | Implementing dashboard page | 1d | 2019-06-24 | 2019-06-25 | 17 |  |  | 0d |  | Nguyen Hong Phat | 8h |  | 1,200,000 |  |
| 19 | 3.3.4 | Implementing CRUD system entities | 1d | 2019-06-25 | 2019-06-26 | 18 |  |  | 0d |  | Phan Tran Hoang Duong | 8h |  | 1,440,000 |  |
| 20 | 3.3.5 | Implementing configuration | 1d | 2019-06-26 | 2019-06-27 | 19 |  |  | 0d |  | Nguyen Thi Ha Anh | 8h |  | 960,000 |  |
| 21 | 3.3.6 | Attach API to template | 1d | 2019-06-27 | 2019-06-28 | 20 |  |  | 0d |  | Nguyen Hong Phat | 8h |  | 1,200,000 |  |
| 22 | 3.4 | Apply CI/CD for Web Admin | 2h | 2019-06-20 | 2019-06-20 |  |  |  | 14.12d |  | Phan Tran Hoang Duong | 2h |  | 360,000 |  |
| 23 | 3.5 | **Create Mobile App** | 8d? | 2019-06-28 | 2019-07-10 | 10 |  |  | 0d |  |  | 64h |  | 8,880,000 |  |
| 24 | 3.5.1 | Scaffolding project from template | 1d? | 2019-06-28 | 2019-07-01 | 21 |  |  | 0d |  | Nguyen Hong Phat | 8h |  | 1,200,000 |  |
| 25 | 3.5.2 | Login and register screen | 1d? | 2019-07-01 | 2019-07-02 | 24 |  |  | 0d |  | Nguyen Thi Ha Anh | 8h |  | 960,000 |  |
| 26 | 3.5.3 | Authenticating and token handler | 1d? | 2019-07-02 | 2019-07-03 | 25 |  |  | 0d |  | Phan Tran Hoang Duong | 8h |  | 1,440,000 |  |
| 27 | 3.5.4 | Implementing home screen | 1d? | 2019-07-03 | 2019-07-04 | 26 |  |  | 0d |  | Vu Minh Duy | 8h |  | 960,000 |  |
| 28 | 3.5.5 | Implement events/organizations page | 1d? | 2019-07-04 | 2019-07-05 | 27 |  |  | 0d |  | Nguyen Hong Phat | 8h |  | 1,200,000 |  |
| 29 | 3.5.6 | Implement news, post, update, delete events | 1d? | 2019-07-05 | 2019-07-08 | 28 |  |  | 0d |  | Nguyen Thi Ha Anh | 8h |  | 960,000 |  |
| 30 | 3.5.7 | Implement organization management | 1d? | 2019-07-08 | 2019-07-09 | 29 |  |  | 0d |  | Nguyen Hong Phat | 8h |  | 1,200,000 |  |
| 31 | 3.5.8 | Attach API to application | 1d? | 2019-07-09 | 2019-07-10 | 30 |  |  | 0d |  | Vu Minh Duy | 8h |  | 960,000 |  |

| ID | WBS | Task | Duration | Start | Finish | Predecessors | Total slack | Resources | Work | Cost |
| --- | --- | --- | --- | --- | --- | --- | --- | --- | --- | --- |
| 32 | 4 | **Validation** | 2d | 2019-07-10 | 2019-07-12 | 12 | 0d |  | 32h | 4,800,000 |
| 33 | 4.1 | QC for Web | 2d | 2019-07-10 | 2019-07-12 | 14 | 0d | Phan Tran Hoang Duong | 16h | 2,880,000 |
| 34 | 4.2 | QC for Mobile | 2d | 2019-07-10 | 2019-07-12 | 23 | 0d | Nguyen Thi Ha Anh | 16h | 1,920,000 |
