# Project Tracking Database

Schedule from MS Project, 2009-06-01 to 2009-11-23, costs in $.

## Calendars

- Standard: Mon-Fri 08:00-12:00, 13:00-17:00; Sat-Sun off.

## Resources

| Resource | Group | Rate |
| --- | --- | --- |
| Kathy | 1 | 55 |
| John | 1 | 40 |
| Mary | 1 | 40 |
| Chris | 1 | 20 |

## Schedule

| ID | WBS | Task | Type | Duration | Start | Finish | Predecessors | Total slack | Constraint | Resources | Work | Cost |
| --- | --- | --- | --- | --- | --- | --- | --- | --- | --- | --- | --- | --- |
| 1 | 1 | **Initiating** |  | 10.25d | 2009-06-01 08:00 | 2009-06-15 10:00 |  | 0d |  |  | 52h | 2,710 |
| 2 | 1.1 | Kickoff meeting |  | 2h | 2009-06-01 08:00 | 2009-06-01 10:00 |  | 0d | start no earlier than 2009-06-01 08:00 | Kathy; John | 4h | 190 |
| 3 | 1.2 | Develop project charter |  | 10d | 2009-06-01 10:00 | 2009-06-15 10:00 | 2 | 0d | start no earlier than 2007-06-04 10:00 | Kathy [50%]; John [10%] | 48h | 2,520 |
| 4 | 1.3 | Charter signed | milestone | 0d | 2009-06-15 10:00 | 2009-06-15 10:00 | 3 | 0d | finish no earlier than 2007-06-18 10:00 |  |  |  |
| 5 | 2 | **Planning** |  | 95d | 2009-06-15 10:00 | 2009-10-26 10:00 |  | 0d |  |  | 164h | 7,460 |
| 6 | 2.1 | Develop project plans |  | 3w | 2009-06-15 10:00 | 2009-07-06 10:00 | 4 | 0d | start no earlier than 2007-06-18 10:00 | Kathy [50%]; John [20%]; Mary [20%]; Chris [20%] | 132h | 5,700 |
| 7 | 2.2 | Review project plans |  | 4mo | 2009-07-06 10:00 | 2009-10-26 10:00 | 6 | 20d | start no earlier than 2007-07-09 10:00 | Kathy [5%] | 32h | 1,760 |
| 8 | 2.3 | Project plans approved | milestone | 0d | 2009-07-06 10:00 | 2009-07-06 10:00 | 6 | 0d | finish no earlier than 2007-07-09 10:00 |  |  |  |
| 9 | 3 | **Executing** |  | 85d | 2009-07-06 10:00 | 2009-11-02 10:00 |  | 0d |  |  | 800h | 30,400 |
| 10 | 3.1 | Analysis |  | 1mo | 2009-07-06 10:00 | 2009-08-03 10:00 | 8 | 0d | start no earlier than 2007-07-09 10:00 | Kathy [10%]; John [50%]; Mary [50%]; Chris [20%] | 208h | 7,920 |
| 11 | 3.2 | Design |  | 2.1mo | 2009-07-30 10:00 | 2009-09-28 10:00 | 10FS-1% | 0d | start no earlier than 2007-08-02 10:00 | Kathy [10%]; John [20%]; Mary [50%]; Chris [20%] | 320h | 12,000 |
| 12 | 3.3 | Implementation |  | 1.15mo | 2009-09-23 10:00 | 2009-10-26 10:00 | 11FS-3d | 0d | start no earlier than 2007-09-24 10:00 | Kathy [50%]; John [20%]; Mary [50%]; Chris [50%] | 272h | 10,480 |
| 13 | 3.4 | System implemented | milestone | 0d | 2009-11-02 10:00 | 2009-11-02 10:00 | 12FS+5d | 0d | finish no earlier than 2007-10-29 10:00 |  |  |  |
| 14 | 4 | **Controlling** |  | 106.88d | 2009-06-01 10:00 | 2009-10-28 09:00 |  | 18.12d |  |  | 128.09h | 6,564.35 |
| 15 | 4.1 | **Status Reports** |  | 100.12d | 2009-06-10 08:00 | 2009-10-28 09:00 |  | 18.12d |  | John [2%]; Mary [2%]; Kathy [5%] | 72.09h | 3,484.35 |
| 16 | 4.1.1 | Status Reports 1 |  | 1h | 2009-06-10 08:00 | 2009-06-10 09:00 |  | 113.12d | start no earlier than 2009-06-10 08:00 |  |  |  |
| 17 | 4.1.2 | Status Reports 2 |  | 1h | 2009-06-17 08:00 | 2009-06-17 09:00 |  | 108.12d | start no earlier than 2009-06-17 08:00 |  |  |  |
| 18 | 4.1.3 | Status Reports 3 |  | 1h | 2009-06-24 08:00 | 2009-06-24 09:00 |  | 103.12d | start no earlier than 2009-06-24 08:00 |  |  |  |
| 19 | 4.1.4 | Status Reports 4 |  | 1h | 2009-07-01 08:00 | 2009-07-01 09:00 |  | 98.12d | start no earlier than 2009-07-01 08:00 |  |  |  |
| 20 | 4.1.5 | Status Reports 5 |  | 1h | 2009-07-08 08:00 | 2009-07-08 09:00 |  | 93.12d | start no earlier than 2009-07-08 08:00 |  |  |  |
| 21 | 4.1.6 | Status Reports 6 |  | 1h | 2009-07-15 08:00 | 2009-07-15 09:00 |  | 88.12d | start no earlier than 2009-07-15 08:00 |  |  |  |
| 22 | 4.1.7 | Status Reports 7 |  | 1h | 2009-07-22 08:00 | 2009-07-22 09:00 |  | 83.12d | start no earlier than 2009-07-22 08:00 |  |  |  |
| 23 | 4.1.8 | Status Reports 8 |  | 1h | 2009-07-29 08:00 | 2009-07-29 09:00 |  | 78.12d | start no earlier than 2009-07-29 08:00 |  |  |  |
| 24 | 4.1.9 | Status Reports 9 |  | 1h | 2009-08-05 08:00 | 2009-08-05 09:00 |  | 73.12d | start no earlier than 2009-08-05 08:00 |  |  |  |
| 25 | 4.1.10 | Status Reports 10 |  | 1h | 2009-08-12 08:00 | 2009-08-12 09:00 |  | 68.12d | start no earlier than 2009-08-12 08:00 |  |  |  |
| 26 | 4.1.11 | Status Reports 11 |  | 1h | 2009-08-19 08:00 | 2009-08-19 09:00 |  | 63.12d | start no earlier than 2009-08-19 08:00 |  |  |  |
| 27 | 4.1.12 | Status Reports 12 |  | 1h | 2009-08-26 08:00 | 2009-08-26 09:00 |  | 58.12d | start no earlier than 2009-08-26 08:00 |  |  |  |
| 28 | 4.1.13 | Status Reports 13 |  | 1h | 2009-09-02 08:00 | 2009-09-02 09:00 |  | 53.12d | start no earlier than 2009-09-02 08:00 |  |  |  |
| 29 | 4.1.14 | Status Reports 14 |  | 1h | 2009-09-09 08:00 | 2009-09-09 09:00 |  | 48.12d | start no earlier than 2009-09-09 08:00 |  |  |  |
| 30 | 4.1.15 | Status Reports 15 |  | 1h | 2009-09-16 08:00 | 2009-09-16 09:00 |  | 43.12d | start no earlier than 2009-09-16 08:00 |  |  |  |
| 31 | 4.1.16 | Status Reports 16 |  | 1h | 2009-09-23 08:00 | 2009-09-23 09:00 |  | 38.12d | start no earlier than 2009-09-23 08:00 |  |  |  |
| 32 | 4.1.17 | Status Reports 17 |  | 1h | 2009-09-30 08:00 | 2009-09-30 09:00 |  | 33.12d | start no earlier than 2009-09-30 08:00 |  |  |  |
| 33 | 4.1.18 | Status Reports 18 |  | 1h | 2009-10-07 08:00 | 2009-10-07 09:00 |  | 28.12d | start no earlier than 2009-10-07 08:00 |  |  |  |
| 34 | 4.1.19 | Status Reports 19 |  | 1h | 2009-10-14 08:00 | 2009-10-14 09:00 |  | 23.12d | start no earlier than 2009-10-14 08:00 |  |  |  |
| 35 | 4.1.20 | Status Reports 20 |  | 1h | 2009-10-21 08:00 | 2009-10-21 09:00 |  | 18.12d | start no earlier than 2009-10-21 08:00 |  |  |  |
| 36 | 4.1.21 | Status Reports 21 |  | 1h | 2009-10-28 08:00 | 2009-10-28 09:00 |  | 13.12d | start no earlier than 2009-10-28 08:00 |  |  |  |
| 37 | 4.2 | Report performance |  | 5mo | 2009-06-01 10:00 | 2009-10-19 10:00 |  | 25d | start no earlier than 2009-06-01 08:00 | Kathy [2%] | 16h | 880 |
| 38 | 4.3 | Control changes |  | 5mo | 2009-06-01 10:00 | 2009-10-19 10:00 |  | 25d | start no earlier than 2009-06-01 08:00 | Kathy [5%] | 40h | 2,200 |

| ID | WBS | Task | Type | Duration | Start | Finish | Predecessors | Total slack | Constraint | Resources | Work | Cost |
| --- | --- | --- | --- | --- | --- | --- | --- | --- | --- | --- | --- | --- |
| 39 | 5 | **Closing** |  | 15d | 2009-11-02 10:00 | 2009-11-23 10:00 |  | 0d |  |  | 48h | 2,640 |
| 40 | 5.1 | Prepare final project report |  | 2w | 2009-11-02 10:00 | 2009-11-16 10:00 | 13 | 0d | start no earlier than 2007-10-29 10:00 | Kathy [50%] | 40h | 2,200 |
| 41 | 5.2 | Present final project |  | 1w | 2009-11-16 10:00 | 2009-11-23 10:00 | 40 | 0d | start no earlier than 2007-11-12 10:00 | Kathy [20%] | 8h | 440 |
| 42 | 5.3 | Project completed | milestone | 0d | 2009-11-23 10:00 | 2009-11-23 10:00 | 41 | 0d | finish no earlier than 2007-11-19 10:00 |  |  |  |
